# Progetto 2 PM

Schedule from MS Project, 2021-01-12 to 2021-08-23, costs in €.

## Calendars

- Standard: Mon-Fri 09:00-13:00, 14:00-18:00; Sat-Sun off.

## Resources

| Resource | Rate |
| --- | --- |
| Gabriele De Bartolomeo | 25.13 |
| Cristian Colavito | 36.12 |
| Giorgio Levi | 34.37 |
| Carla Mora | 25.13 |
| Riccardo Melo | 22.07 |
| Fanny Velasco | 20 |
| Tiziano Seri | 20 |
| Mauro Neri | 20 |
| Franco Morbidoni | 18.22 |
| Ronald McDonovan | 15 |
| Franca Menta | 16.26 |
| Francesca Rocca | 17.11 |
| Giorgio Nelli | 17.11 |

## Schedule

| ID | WBS | Task | Type | Duration | Start | Finish | Predecessors | Total slack | Free slack | Constraint | Resources | Work | Cost |
| --- | --- | --- | --- | --- | --- | --- | --- | --- | --- | --- | --- | --- | --- |
| 1 | 1 | **OR1:GESTIONE E CONTROLLO** |  | 160d | 2021-01-12 | 2021-08-23 |  | 0d |  |  |  | 1280h | 46,233.6 |
| 2 | 1.1 | Business Case e Piano di Progetto |  | 3d | 2021-01-12 | 2021-01-14 |  | 0d |  |  | Cristian Colavito | 24h | 866.88 |
| 3 | 1.2 | Documento di Gestione dei Rischi |  | 2d | 2021-01-15 | 2021-01-18 | 2 | 0d |  |  | Cristian Colavito | 16h | 577.92 |
| 4 | 1.3 | Documento di Gestione della Qualità |  | 3d | 2021-01-19 | 2021-01-21 | 3 | 0d |  |  | Cristian Colavito | 24h | 866.88 |
| 5 | 1.4 | Documento di Gestione della Comunicazione |  | 5d | 2021-01-22 | 2021-01-28 | 4 | 0d |  |  | Cristian Colavito | 40h | 1,444.8 |
| 6 | 1.5 | Documento di Gestione del Timing, del Budget e delle Risorse |  | 2d | 2021-01-29 | 2021-02-01 | 5 | 0d |  |  | Cristian Colavito | 16h | 577.92 |
| 7 | 1.6 | Studio di mercato |  | 2d | 2021-02-02 | 2021-02-03 | 6 | 0d |  |  | Cristian Colavito | 16h | 577.92 |
| 8 | 1.7 | Documento di Controllo e Monitoraggio sugli Obiettivi del Progetto |  | 137d | 2021-02-04 | 2021-08-13 | 7 | 0d |  | start no earlier than 2021-01-11 | Cristian Colavito | 1096h | 39,587.52 |
| 9 | 1.8 | **Documento di Chiusura e Lessons Learned** |  | 6d | 2021-08-16 | 2021-08-23 | 8 | 0d |  |  |  | 48h | 1,733.76 |
| 10 | 1.8.1 | Documento di Chiusura |  | 3d | 2021-08-16 | 2021-08-18 |  | 0d |  |  | Cristian Colavito | 24h | 866.88 |
| 11 | 1.8.2 | Lessons Learned |  | 3d | 2021-08-19 | 2021-08-23 | 10 | 0d |  |  | Cristian Colavito | 24h | 866.88 |
| 12 | 1.9 | Milestone 1 | milestone | 0d | 2021-02-03 | 2021-02-03 | 7 | 7d | 0d |  |  |  |  |
| 13 | 2 | **z<** |  | 48d | 2021-02-04 | 2021-04-12 | 12 | 7d |  |  |  | 515h | 13,641.87 |
| 14 | 2.1 | **Report pianificazione dell’infrastruttura di rete** |  | 19d | 2021-02-04 | 2021-03-02 |  | 7d | 0d |  |  | 276h | 8,340.36 |
| 15 | 2.1.1 | Analisi di mercato sulle soluzioni topologiche moderne |  | 2d | 2021-02-04 | 2021-02-05 |  | 7d | 0d |  | Gabriele De Bartolomeo; Giorgio Levi | 32h | 952 |
| 16 | 2.1.2 | Individuazione asset informatici e rischi correlati |  | 6d | 2021-02-08 | 2021-02-15 | 15 | 7d | 0d |  | Gabriele De Bartolomeo; Giorgio Levi | 96h | 2,856 |
| 17 | 2.1.3 | Pianificazione su software di simulazione di topologie di rete |  | 7d | 2021-02-16 | 2021-02-24 | 16 | 7d | 0d |  | Gabriele De Bartolomeo; Giorgio Levi | 84h | 2,628.36 |
| 18 | 2.1.4 | Stesura di report finale sulla pianificazione della rete |  | 4d | 2021-02-25 | 2021-03-02 | 17 | 7d |  |  | Gabriele De Bartolomeo; Giorgio Levi | 64h | 1,904 |
| 19 | 2.2 | Milestone 2 | milestone | 0d | 2021-03-02 | 2021-03-02 | 14 | 7d | 0d |  |  |  |  |
| 20 | 2.3 | **Realizzazione dell’infrastruttura di rete** |  | 20d | 2021-03-03 | 2021-03-30 | 19 | 7d | 6d |  |  | 22h | 552.86 |
| 21 | 2.3.1 | Acquisto degli apparati necessari e realizzazione della rete |  | 20d | 2021-03-03 | 2021-03-30 |  | 7d | 0d |  | Gabriele De Bartolomeo | 22h | 552.86 |
| 22 | 2.4 | **Rafforzamento della sicurezza informatica** |  | 26d | 2021-03-03 | 2021-04-07 | 14 | 7d | 0d |  |  | 136h | 3,310.96 |
| 23 | 2.4.1 | Valutazione preventivi con aziende specializzate in penetration testing |  | 10d | 2021-03-03 | 2021-03-16 | 21SS | 17d | 10d | start no earlier than 2021-01-13 | Gabriele De Bartolomeo; Giorgio Levi | 24h | 714 |
| 24 | 2.4.2 | Svolgimento penetration testing da parte di due aziende scelte |  | 2d | 2021-03-31 | 2021-04-01 | 21, 23 | 7d | 0d |  | Giorgio Nelli; Francesca Rocca; Giorgio Levi | 48h | 1,097.44 |
| 25 | 2.4.3 | Simulazione Disaster Recovery |  | 2d | 2021-04-02 | 2021-04-05 | 24 | 7d | 0d |  | Giorgio Nelli; Francesca Rocca; Giorgio Levi | 48h | 1,097.44 |
| 26 | 2.4.4 | Stesura delle linee guida per un piano di Disaster Recovery |  | 2d | 2021-04-06 | 2021-04-07 | 25 | 7d | 0d |  | Gabriele De Bartolomeo | 16h | 402.08 |

| ID | WBS | Task | Type | Duration | Start | Finish | Predecessors | Total slack | Free slack | Resources | Work | Cost |
| --- | --- | --- | --- | --- | --- | --- | --- | --- | --- | --- | --- | --- |
| 27 | 2.5 | **Corso anti social-engineering per i dipendenti** |  | 23d | 2021-03-03 | 2021-04-02 | 14 | 10d | 3d |  | 33h | 616.41 |
| 28 | 2.5.1 | Valutazione preventivi con aziende specializzate nell’attività di training per il contrasto al social engineering |  | 7d | 2021-03-03 | 2021-03-11 | 21SS | 23d | 13d | Gabriele De Bartolomeo | 9h | 226.17 |
| 29 | 2.5.2 | Contrattazione ed erogazione del corso anti social-engineering da parte dell'azienda scelta |  | 3d | 2021-03-31 | 2021-04-02 | 28, 21 | 10d |  | Franca Menta | 24h | 390.24 |
| 30 | 2.6 | **Messa in opera dell’infrastruttura di rete** |  | 3d | 2021-04-08 | 2021-04-12 | 20, 22, 27 | 7d | 0d |  | 48h | 821.28 |
| 31 | 2.6.1 | Messa in opera dell’infrastruttura di rete |  | 3d | 2021-04-08 | 2021-04-12 | 26 | 7d |  | Giorgio Nelli; Francesca Rocca | 48h | 821.28 |
| 32 | 2.7 | SAL 1 | milestone | 0d | 2021-04-12 | 2021-04-12 | 30 | 7d | 0d |  |  |  |
| 33 | 3 | **OR3: Realizzazione Back-end** |  | 55d | 2021-04-13 | 2021-06-28 | 32 | 7d |  |  | 1192h | 25,048.88 |
| 34 | 3.1 | **Accesso al dominio** |  | 3d | 2021-04-13 | 2021-04-15 |  | 7d | 0d |  | 48h | 1,132.8 |
| 35 | 3.1.1 | Inizializzazione dominio web |  | 2d | 2021-04-13 | 2021-04-14 |  | 7d | 0d | Carla Mora; Riccardo Melo | 32h | 755.2 |
| 36 | 3.1.2 | Avvio server sul dominio |  | 1d | 2021-04-15 | 2021-04-15 | 35 | 7d |  | Carla Mora; Riccardo Melo | 16h | 377.6 |
| 37 | 3.2 | **Documento di progettazione del database** |  | 20d | 2021-04-16 | 2021-05-13 | 34 | 7d | 0d |  | 432h | 9,676.08 |
| 38 | 3.2.1 | Realizzazione diagramma E/R |  | 7d | 2021-04-16 | 2021-04-26 |  | 7d | 0d | Carla Mora; Riccardo Melo | 112h | 2,643.2 |
| 39 | 3.2.2 | Progettazione logica del database |  | 3d | 2021-04-27 | 2021-04-29 | 38 | 7d | 0d | Carla Mora; Riccardo Melo | 48h | 1,132.8 |
| 40 | 3.2.3 | Progettazione fisica del database |  | 3d | 2021-04-30 | 2021-05-04 | 39 | 7d | 0d | Carla Mora; Riccardo Melo | 48h | 1,132.8 |
| 41 | 3.2.4 | Progettazione Controller del Database |  | 7d | 2021-05-05 | 2021-05-13 | 40 | 7d |  | Carla Mora; Fanny Velasco; Tiziano Seri; Mauro Neri | 224h | 4,767.28 |
| 42 | 3.3 | Milestone 3 | milestone | 0d | 2021-05-13 | 2021-05-13 | 37 | 7d | 0d |  |  |  |
| 43 | 3.4 | **Database** |  | 10d | 2021-05-14 | 2021-05-27 | 42 | 7d | 0d |  | 200h | 4,000 |
| 44 | 3.4.1 | Implementazione del database |  | 10d | 2021-05-14 | 2021-05-27 |  | 7d |  | Tiziano Seri; Mauro Neri | 160h | 3,200 |
| 45 | 3.4.2 | Implementazione Controller del Database |  | 5d | 2021-05-14 | 2021-05-20 |  | 12d |  | Fanny Velasco | 40h | 800 |
| 46 | 3.5 | **Accesso al CMS** |  | 2d | 2021-05-28 | 2021-05-31 | 43 | 7d | 0d |  | 32h | 640 |
| 47 | 3.5.1 | Installazione del CMS |  | 2d | 2021-05-28 | 2021-05-31 |  | 7d |  | Mauro Neri; Tiziano Seri | 32h | 640 |
| 48 | 3.6 | **Autenticazione** |  | 20d | 2021-06-01 | 2021-06-28 | 46 | 7d | 0d |  | 160h | 3,200 |
| 49 | 3.6.1 | Progettazione del plugin di autenticazione |  | 12d | 2021-06-01 | 2021-06-16 |  | 7d | 0d | Mauro Neri | 96h | 1,920 |
| 50 | 3.6.2 | Interfaccia di autenticazione |  | 8d | 2021-06-17 | 2021-06-28 | 49 | 7d |  | Mauro Neri | 64h | 1,280 |

| ID | WBS | Task | Type | Duration | Start | Finish | Predecessors | Total slack | Free slack | Resources | Work | Cost |
| --- | --- | --- | --- | --- | --- | --- | --- | --- | --- | --- | --- | --- |
| 51 | 3.7 | **Pagamento** |  | 20d | 2021-06-01 | 2021-06-28 | 46 | 7d | 0d |  | 160h | 3,200 |
| 52 | 3.7.1 | Progettazione del plugin di pagamento |  | 12d | 2021-06-01 | 2021-06-16 |  | 7d | 0d | Fanny Velasco | 96h | 1,920 |
| 53 | 3.7.2 | Interfaccia di pagamento |  | 8d | 2021-06-17 | 2021-06-28 | 52 | 7d |  | Fanny Velasco | 64h | 1,280 |
| 54 | 3.8 | **Gestione Ordini** |  | 20d | 2021-06-01 | 2021-06-28 | 46 | 7d | 0d |  | 160h | 3,200 |
| 55 | 3.8.1 | Progettazione plugin di gestione ordini |  | 12d | 2021-06-01 | 2021-06-16 |  | 7d | 0d | Tiziano Seri | 96h | 1,920 |
| 56 | 3.8.2 | Implementazione plugin di gestione ordini |  | 8d | 2021-06-17 | 2021-06-28 | 55 | 7d |  | Tiziano Seri | 64h | 1,280 |
| 57 | 3.9 | Milestone 4 | milestone | 0d | 2021-06-28 | 2021-06-28 | 48, 51, 54 | 7d | 0d |  |  |  |
| 58 | 4 | **OR4: Realizzazione Front-end** |  | 40d | 2021-06-29 | 2021-08-23 | 57 | 0d |  |  | 664h | 12,437.6 |
| 59 | 4.1 | **Mappa di navigazione del sito** |  | 1d | 2021-06-29 | 2021-06-29 |  | 7d | 0d |  | 12h | 261.04 |
| 60 | 4.1.1 | Realizzazione mappa di navigazione del sito |  | 1d | 2021-06-29 | 2021-06-29 |  | 7d |  | Carla Mora; Ronald McDonovan | 12h | 261.04 |
| 61 | 4.2 | **Template base** |  | 5d | 2021-06-30 | 2021-07-06 | 59 | 7d | 0d |  | 80h | 1,423.04 |
| 62 | 4.2.1 | Scelta colori e font del sito |  | 2d | 2021-06-30 | 2021-07-01 |  | 7d | 0d | Franco Morbidoni; Ronald McDonovan | 24h | 411.52 |
| 63 | 4.2.2.1 | Progettazione Header |  | 2d | 2021-07-02 | 2021-07-05 | 62 | 7d | 0d | Franco Morbidoni; Ronald McDonovan | 16h | 265.76 |
| 64 | 4.2.2.2 | Realizzazione Header |  | 1d | 2021-07-06 | 2021-07-06 | 63 | 7d |  | Fanny Velasco; Mauro Neri | 16h | 320 |
| 65 | 4.2.3.1 | Progettazione Footer |  | 2d | 2021-07-02 | 2021-07-05 | 62 | 7d | 0d | Franco Morbidoni; Ronald McDonovan | 16h | 265.76 |
| 66 | 4.2.3.2 | Realizzazione Footer |  | 1d | 2021-07-06 | 2021-07-06 | 65 | 7d |  | Tiziano Seri | 8h | 160 |
| 67 | 4.3 | **Area personale e autenticazione** |  | 5d | 2021-07-07 | 2021-07-13 | 61 | 7d | 0d |  | 96h | 1,757.28 |
| 68 | 4.3.1.1 | Progettazione Pagina Profilo |  | 2d | 2021-07-07 | 2021-07-08 |  | 7d | 0d | Franco Morbidoni; Ronald McDonovan | 16h | 265.76 |
| 69 | 4.3.1.2 | Realizzazione Pagina Profilo |  | 1d | 2021-07-09 | 2021-07-09 | 68 | 9d |  | Fanny Velasco; Mauro Neri | 16h | 320 |
| 70 | 4.3.2.1 | Progettazione Pagina Login |  | 2d | 2021-07-07 | 2021-07-08 |  | 7d | 0d | Franco Morbidoni; Ronald McDonovan | 16h | 265.76 |
| 71 | 4.3.2.2 | Realizzazione Pagina Login |  | 1d | 2021-07-09 | 2021-07-09 | 70 | 9d |  | Tiziano Seri | 8h | 160 |
| 72 | 4.3.3.1 | Progettazione Registrazione |  | 2d | 2021-07-09 | 2021-07-12 | 68, 70 | 7d | 0d | Franco Morbidoni; Ronald McDonovan | 16h | 265.76 |
| 73 | 4.3.3.2 | Realizzazione Registrazione |  | 1d | 2021-07-13 | 2021-07-13 | 72 | 7d |  | Fanny Velasco; Mauro Neri; Tiziano Seri | 24h | 480 |
| 74 | 4.4 | **Area E-commerce** |  | 8d | 2021-07-14 | 2021-07-23 | 67 | 7d | 0d |  | 172h | 3,255.92 |
| 75 | 4.4.1.1 | Progettazione area recensioni |  | 3d | 2021-07-14 | 2021-07-16 |  | 7d | 0d | Franco Morbidoni; Ronald McDonovan | 24h | 398.64 |
| 76 | 4.4.1.2 | Realizzazione area recensioni |  | 2d | 2021-07-19 | 2021-07-20 | 75 | 10d |  | Fanny Velasco; Mauro Neri; Tiziano Seri | 48h | 960 |
| 77 | 4.4.2.1 | Progettazione Carrello |  | 2d | 2021-07-19 | 2021-07-20 | 75 | 9d | 0d | Franco Morbidoni | 8h | 145.76 |
| 78 | 4.4.2.2 | Realizzazione Carrello |  | 1d | 2021-07-21 | 2021-07-21 | 77 | 9d |  | Fanny Velasco; Mauro Neri; Tiziano Seri | 16h | 320 |
| 79 | 4.4.3.1 | Progettazione area acquisti |  | 3d | 2021-07-19 | 2021-07-21 | 75 | 7d | 0d | Franco Morbidoni; Ronald McDonovan | 28h | 471.52 |
| 80 | 4.4.3.2 | Realizzazione area acquisti |  | 2d | 2021-07-22 | 2021-07-23 | 79 | 7d |  | Fanny Velasco; Mauro Neri; Tiziano Seri | 48h | 960 |
| 81 | 4.5 | Milestone 5 | milestone | 0d | 2021-07-23 | 2021-07-23 | 74 | 7d | 0d |  |  |  |

| ID | WBS | Task | Type | Duration | Start | Finish | Predecessors | Total slack | Free slack | Resources | Work | Cost |
| --- | --- | --- | --- | --- | --- | --- | --- | --- | --- | --- | --- | --- |
| 82 | 4.6 | **Area Prodotto** |  | 3d | 2021-07-26 | 2021-07-28 | 81 | 7d | 0d |  | 80h | 1,491.52 |
| 83 | 4.5.1.1 | Progettazione pagina prodotto |  | 2d | 2021-07-26 | 2021-07-27 |  | 7d | 0d | Franco Morbidoni; Ronald McDonovan | 24h | 398.64 |
| 84 | 4.5.1.2 | Realizzazione pagina prodotto |  | 1d | 2021-07-28 | 2021-07-28 | 83 | 7d |  | Fanny Velasco; Mauro Neri; Tiziano Seri | 24h | 480 |
| 85 | 4.5.2.1 | Progettazione Modifica Prodotto |  | 1d | 2021-07-26 | 2021-07-26 |  | 8d | 0d | Franco Morbidoni; Ronald McDonovan | 8h | 132.88 |
| 86 | 4.5.2.2 | Realizzazione Modifica Prodotto |  | 1d | 2021-07-27 | 2021-07-27 | 85 | 8d |  | Fanny Velasco; Mauro Neri; Tiziano Seri | 24h | 480 |
| 87 | 4.7 | **Area Social** |  | 4d | 2021-07-29 | 2021-08-03 | 82 | 14d |  |  | 74h | 1,382.2 |
| 88 | 4.6.1.1 | Progettazione Visualizza profilo utente e designer |  | 2d | 2021-07-29 | 2021-07-30 |  | 15d | 0d | Franco Morbidoni; Ronald McDonovan | 12h | 192.88 |
| 89 | 4.6.1.2 | Realizzazione Visualizza profilo utente e designer |  | 1d | 2021-08-02 | 2021-08-02 | 88 | 15d |  | Fanny Velasco | 8h | 160 |
| 90 | 4.6.2.1 | Progettazione Area Lavora con noi |  | 1d | 2021-07-29 | 2021-07-29 |  | 16d | 0d | Franco Morbidoni | 2h | 36.44 |
| 91 | 4.6.2.2 | Realizzazione Area Lavora con noi |  | 1d | 2021-07-30 | 2021-07-30 | 90 | 16d |  | Fanny Velasco; Mauro Neri; Tiziano Seri | 24h | 480 |
| 92 | 4.6.3.1 | Progettazione Chat |  | 2d | 2021-07-29 | 2021-07-30 |  | 14d | 0d | Franco Morbidoni; Ronald McDonovan | 12h | 192.88 |
| 93 | 4.6.3.2 | Realizzazione Chat |  | 2d | 2021-08-02 | 2021-08-03 | 92 | 14d |  | Mauro Neri | 16h | 320 |
| 94 | 4.8 | **Area Moderatore** |  | 4d | 2021-07-29 | 2021-08-03 | 82 | 7d | 0d |  | 22h | 429.32 |
| 95 | 4.8.1 | Progettazione Area Candidati Designer |  | 2d | 2021-07-29 | 2021-07-30 |  | 7d | 0d | Franco Morbidoni | 6h | 109.32 |
| 96 | 4.8.2 | Realizzazione Area Candidati Designer |  | 2d | 2021-08-02 | 2021-08-03 | 95 | 7d |  | Tiziano Seri | 16h | 320 |
| 97 | 4.9 | **Area Gestionale** |  | 4d | 2021-08-04 | 2021-08-09 | 94 | 7d | 0d |  | 80h | 1,491.52 |
| 98 | 4.9.1 | Progettazione Area Ordini |  | 2d | 2021-08-04 | 2021-08-05 |  | 7d | 0d | Franco Morbidoni; Ronald McDonovan | 16h | 265.76 |
| 99 | 4.9.2 | Realizzazione Area Ordini |  | 2d | 2021-08-06 | 2021-08-09 | 98 | 7d |  | Tiziano Seri; Mauro Neri | 32h | 640 |
| 100 | 4.9.3 | Progettazione Area Gestione Produzione |  | 2d | 2021-08-04 | 2021-08-05 |  | 7d | 0d | Franco Morbidoni; Ronald McDonovan | 16h | 265.76 |
| 101 | 4.9.4 | Realizzazione Area Gestione Produzione |  | 2d | 2021-08-06 | 2021-08-09 | 100 | 7d |  | Fanny Velasco | 16h | 320 |
| 102 | 4.10 | **Area Ricerca e Classifica** |  | 3d | 2021-08-10 | 2021-08-12 | 97 | 7d |  |  | 48h | 945.76 |
| 103 | 4.10.1 | Progettazione Area Classifica |  | 1d | 2021-08-10 | 2021-08-10 |  | 7d | 0d | Franco Morbidoni | 4h | 72.88 |
| 104 | 4.10.2 | Realizzazione Area Classifica |  | 2d | 2021-08-11 | 2021-08-12 | 103 | 7d |  | Tiziano Seri; Mauro Neri | 32h | 640 |
| 105 | 4.10.3 | Progettazione Area Ricerca Prodotto |  | 1d | 2021-08-10 | 2021-08-10 |  | 8d | 0d | Franco Morbidoni | 4h | 72.88 |
| 106 | 4.10.4 | Realizzazione Area Ricerca Prodotto |  | 1d | 2021-08-11 | 2021-08-11 | 105 | 8d |  | Fanny Velasco | 8h | 160 |
| 107 | 4.11 | SAL FINE PROGETTO | milestone | 0d | 2021-08-23 | 2021-08-23 | 9 | 0d |  |  |  |  |
